Schedule from MS Project, 2018-09-20 to 2019-01-22, 1 hours a day, A marks actual dates.
寰�杞�涓�鍥�

## Calendars

- 标准: Mon-Fri 20:00-21:00; Sat-Sun 14:00-18:00. Exceptions (off unless hours are given): 2018-10-01 to 2018-10-04 (节假日), 2018-10-08 (节假日).

## Resources

| Resource |
| --- |
| 郦哲聪 |
| 冯一鸣 |
| 刘乐威 |
| 王飞钢 |
| 周德阳 |

## Schedule

| ID | WBS | Task | Type | Duration | Start | Finish | Predecessors | Complete | Remaining | Actual finish | Total slack | Constraint | Resources | Work | Actual work | 输入 | 输出 |
| --- | --- | --- | --- | --- | --- | --- | --- | --- | --- | --- | --- | --- | --- | --- | --- | --- | --- |
| 1 | 1 | **项目启动** |  | 50h | 2018-09-20 20:00 A | 2018-10-08 18:00 |  | 100% |  | 2018-10-07 22:00 |  |  |  | 46.75h | 46.75h |  |  |
| 2 | 1.1 | 小组建立 |  | 1h | 2018-09-20 20:00 A | 2018-09-20 21:00 A |  | 100% |  |  |  |  | 郦哲聪 [50%]; 冯一鸣 [50%]; 刘乐威 [50%]; 王飞钢 [50%]; 周德阳 [50%] | 0.75h | 0.75h | 小组成员信息 | 小组成员及组长确立 |
| 3 | 1.2 | 环境搭建 | manual | 11h | 2018-09-21 20:00 A | 2018-09-25 21:00 A | 231 | 100% |  |  |  |  | 冯一鸣; 郦哲聪; 周德阳 | 34h | 34h | 软件安装包、github账号 | githug组织、安装好的环境的笔记本*5 |
| 4 | 1.3 | 项目确认 | milestone | 1h | 2018-09-26 20:00 A | 2018-09-26 21:00 A | 231 | 100% |  |  |  | finish no earlier than 2018-09-26 21:00 | 冯一鸣; 郦哲聪 | 2h | 2h | 任务书 | 确认项目内容 |
| 5 | 1.4 | 配置管理 | manual | 3h | 2018-09-29 20:00 A | 2018-09-30 16:00 A | 4, 3 | 100% |  |  |  |  | 周德阳 | 3h | 3h | 课程要求PPT | 初步Git仓库 |
| 6 | 1.5 | 建立小组分支 | manual | 1d | 2018-10-05 20:00 A | 2018-10-05 21:00 A | 5 | 100% |  |  |  |  | 冯一鸣; 郦哲聪; 刘乐威; 王飞钢; 周德阳 | 5h | 5h | 课程要求PPT | 小组个人分支 |
| 7 | 1.6 | 配置管理规范 | manual | 2h | 2018-10-07 20:00 A | 2018-10-07 22:00 A | 6 | 100% |  |  |  |  | 周德阳 | 2h | 2h | 初步Git仓库 | Git仓库搭建 |
| 8 | 2 | **项目计划** |  | 103h | 2018-09-28 20:00 A | 2018-11-24 17:00 |  | 97% | 3.05h |  |  |  |  | 105h | 103h |  |  |
| 9 | 2.1 | **需求工程项目计划v0.1.0** |  | 100d | 2018-09-28 20:00 A | 2018-11-23 21:00 | 232 | 89% | 11.11d |  | 0d |  |  | 21h | 19h |  |  |
| 10 | 2.1.1 | 工作分解初步(wbs) | manual | 3h | 2018-09-28 20:00 A | 2018-09-29 16:00 A | 232 | 100% |  |  |  |  | 郦哲聪 | 3h | 3h | 课本及模板 | wbs表 |
| 11 | 2.1.2 | 工作分解(wbs)修改 | manual | 1h | 2018-10-31 16:00 A | 2018-10-31 17:00 A | 10 | 100% |  |  |  |  | 郦哲聪 | 1h | 1h | wbs表 | wbs表修改 |
| 12 | 2.1.3 | 工作分解(wbs)修改(2) | manual | 1h | 2018-11-10 20:00 A | 2018-11-10 21:00 A | 11 | 100% |  |  |  |  | 郦哲聪 | 1h | 1h | wbs表修改(1) | wbs表修改(2) |
| 13 | 2.1.4 | 工作分解(wbs)修改(3) | manual | 1h | 2018-11-23 20:00 A | 2018-11-23 21:00 A | 12 | 100% |  |  |  |  | 冯一鸣 | 1h | 1h | wbs表修改(2) | wbs表修改(3) |
| 14 | 2.1.5 | 甘特图 | manual | 3h | 2018-09-29 16:00 A | 2018-09-30 15:00 A | 232 | 100% |  |  |  |  | 郦哲聪 | 3h | 3h | wbs表 | 甘特图 |
| 15 | 2.1.6 | 成本管理计划 | manual | 2h | 2018-09-28 20:00 A | 2018-09-29 15:00 A | 232 | 100% |  |  |  |  | 周德阳 | 2h | 2h | 成本计划 | 成本管理计划（word） |
| 16 | 2.1.7 | 质量管理计划 | manual | 1h | 2018-09-28 20:00 A | 2018-09-28 21:00 A | 232 | 100% |  |  |  |  | 冯一鸣 | 1h | 1h | 质量计划 | 质量管理计划（word） |
| 17 | 2.1.8 | 沟通管理计划 | manual | 1h | 2018-09-28 20:00 A | 2018-09-28 21:00 A | 232 | 100% |  |  |  |  | 冯一鸣 | 1h | 1h | 沟通计划 | 沟通管理计划（word） |
| 18 | 2.1.9 | 风险管理计划 | manual | 1h | 2018-09-28 20:00 A | 2018-09-28 21:00 A | 232 | 100% |  |  |  |  | 王飞钢 | 1h | 1h | 风险计划 | 风险管理计划（word） |
| 19 | 2.1.10 | 人力资源计划 | manual | 1h | 2018-09-28 20:00 A | 2018-09-28 21:00 A | 232 | 100% |  |  |  |  | 王飞钢 | 1h | 1h | 人力资源计划 | 人力资源计划（word） |
| 20 | 2.1.11 | 文档整合 | milestone, manual | 3h | 2018-09-28 21:00 A | 2018-09-29 17:00 | 232, 10, 14, 15, 16, 17, 18, 19 | 33% | 2h |  |  |  | 刘乐威 | 6h | 4h | 成本管理计划（word）,质量管理计划（word）,沟通管理计划（word） | 需求工程项目计划（word） |
| 21 | 2.2 | **需求工程项目计划v0.2.0** |  | 1h | 2018-10-06 20:00 A | 2018-10-06 21:00 | 20, 234 | 100% |  | 2018-10-20 21:00 |  |  |  | 8h | 8h |  |  |
| 22 | 2.2.1 | 修改第1，2，6章 | manual | 1d | 2018-10-06 20:00 A | 2018-10-06 21:00 A | 20, 234 | 100% |  |  |  |  | 王飞钢 | 1h | 1h | 需求工程项目计划 | 需求工程项目计划(修改) |
| 23 | 2.2.2 | 修改第7，8章 | manual | 1d | 2018-10-06 20:00 A | 2018-10-06 21:00 A | 20, 234 | 100% |  |  |  |  | 刘乐威 | 1h | 1h | 需求工程项目计划 | 需求工程项目计划(修改) |
| 24 | 2.2.3 | 修改第5章 | manual | 1d | 2018-10-06 20:00 A | 2018-10-06 21:00 A | 20, 234 | 100% |  |  |  |  | 冯一鸣 | 1h | 1h | 需求工程项目计划 | 需求工程项目计划(修改) |
| 25 | 2.2.4 | 修改第3章 | manual | 1d | 2018-10-06 20:00 A | 2018-10-06 21:00 A | 20, 234 | 100% |  |  |  |  | 周德阳 | 1h | 1h | 需求工程项目计划 | 需求工程项目计划(修改) |
| 26 | 2.2.5 | 修改第1，2，5章 | manual | 1d | 2018-10-11 20:00 A | 2018-10-11 21:00 A | 20, 234 | 100% |  |  |  |  | 冯一鸣; 刘乐威 | 2h | 2h | 需求工程项目计划 | 需求工程项目计划(修改) |
| 27 | 2.2.6 | 增加页眉页脚 | manual | 1d | 2018-10-14 20:00 A | 2018-10-14 21:00 A | 20, 234 | 100% |  |  |  |  | 刘乐威 | 1h | 1h | 需求工程项目计划 | 需求工程项目计划(修改) |
| 28 | 2.2.7 | 需求工程项目计划整合v0.2.0 | manual | 23d | 2018-10-20 20:00 A | 2018-10-20 21:00 | 20, 22, 23, 24, 25, 26, 27 | 100% |  | 2018-11-03 09:00 |  |  | 刘乐威 | 1h | 1h | 需求工程项目计划 | 需求工程项目计划(修改)v0.2.0 |

Notes:
- 4: 向杨老师确认项目内容

| ID | WBS | Task | Type | Duration | Start | Finish | Predecessors | Complete | Actual finish | Resources | Work | Actual work | 输入 | 输出 |
| --- | --- | --- | --- | --- | --- | --- | --- | --- | --- | --- | --- | --- | --- | --- |
| 29 | 2.3 | **需求工程项目计划v0.3.0** |  | 41d | 2018-11-02 20:00 A | 2018-11-24 15:00 A |  | 100% |  |  | 8h | 8h |  |  |
| 30 | 2.3.1 | 需求工程计划第七章风险细化修改 | manual | 1h | 2018-11-02 20:00 A | 2018-11-02 21:00 A | 28 | 100% |  | 王飞钢 | 1h | 1h | 需求工程项目计划 | 需求工程项目计划(修改) |
| 31 | 2.3.2 | 需求工程计划第六章沟通管理计划修改 | manual | 1h | 2018-11-02 20:00 A | 2018-11-02 21:00 A | 28 | 100% |  | 冯一鸣 | 1h | 1h | 需求工程项目计划 | 需求工程项目计划(修改) |
| 32 | 2.3.3 | 需求工程计划第四章成本管理计划修改 | manual | 1h | 2018-11-02 20:00 A | 2018-11-02 21:00 A | 28 | 100% |  | 周德阳 | 1h | 1h | 需求工程项目计划 | 需求工程项目计划(修改) |
| 33 | 2.3.4 | 需求工程计划整合v0.2.2 | manual | 1h | 2018-11-03 08:00 A | 2018-11-03 09:00 A | 30, 31, 32 | 100% |  | 刘乐威 | 1h | 1h | 需求工程项目计划 | 需求工程项目计划v0.2.2 |
| 34 | 2.3.5 | 需求工程项目计划修改v0.2.3 | manual | 14h | 2018-11-08 14:00 A | 2018-11-08 15:00 | 33 | 100% | 2018-11-15 15:00 | 刘乐威; 周德阳 | 2h | 2h | 需求工程项目计划(修改第四章和第七章以及部分WBS图) | 需求工程项目计划v0.2.3 |
| 35 | 2.3.6 | 需求工程项目计划修改v0.2.4 | manual | 1h | 2018-11-15 14:00 A | 2018-11-15 15:00 A | 34 | 100% |  | 刘乐威 | 1h | 1h | 修改页码、封面信息、第八章内容及WBS | 需求工程项目计划v0.2.4 |
| 36 | 2.3.7 | 需求工程项目计划修改v0.3.0 | manual | 1h | 2018-11-24 14:00 A | 2018-11-24 15:00 A | 35 | 100% |  | 刘乐威 | 1h | 1h | 需求工程项目计划(修改WBS、增加索引、风险修改、增加obs职责分析、修改成本、修改沟通方式) | 需求工程项目计划v0.3.0 |
| 37 | 2.4 | **需求工程项目计划v1.1.1** |  | 15d | 2018-11-24 15:00 A | 2018-12-01 17:00 A |  | 100% |  |  | 2h | 2h |  |  |
| 38 | 2.4.1 | 需求工程项目计划修改v1.1.0 | manual | 1d | 2018-11-24 15:00 A | 2018-11-24 16:00 A | 36 | 100% |  | 刘乐威 | 1h | 1h | 修改成本计划、增加配置管理工作流程图及介绍 | 需求工程项目计划v1.1.0 |
| 39 | 2.4.2 | 需求工程项目计划修改v1.1.1 | manual | 1d | 2018-12-01 16:00 A | 2018-12-01 17:00 A | 38 | 100% |  | 周德阳 | 1h | 1h | 根据上课内容修改时间成本 | 需求工程项目计划v1.1.1 |
| 40 | 2.5 | **甘特图v1.0.0** |  | 177d | 2018-10-11 20:00 A | 2019-01-13 16:00 A |  | 100% |  |  | 66h | 66h |  |  |
| 41 | 2.5.1 | 甘特图v0.0.1 | manual | 1.5h | 2018-10-11 20:00 A | 2018-10-11 21:30 A | 14 | 100% |  | 郦哲聪; 周德阳 | 2h | 2h | 甘特图v0.0.0 | 甘特图v0.0.1 |
| 42 | 2.5.2 | 甘特图v0.0.2 | manual | 2h | 2018-10-14 20:00 A | 2018-10-15 21:00 A | 41 | 100% |  | 郦哲聪; 周德阳 | 4h | 4h | 甘特图v0.0.1 | 甘特图v0.0.2 |
| 43 | 2.5.3 | 甘特图v0.0.3 | manual | 2h | 2018-10-18 20:00 A | 2018-10-19 21:00 A | 42 | 100% |  | 郦哲聪; 周德阳 | 4h | 4h | 甘特图v0.0.2 | 甘特图v0.0.3 |
| 44 | 2.5.4 | 甘特图v0.0.4 | manual | 2h | 2018-10-21 20:00 A | 2018-10-22 21:00 A | 43 | 100% |  | 郦哲聪; 周德阳 | 4h | 4h | 甘特图v0.0.3 | 甘特图v0.0.4 |
| 45 | 2.5.5 | 甘特图v0.1.0 | manual | 5h | 2018-10-26 09:00 A | 2018-10-26 14:00 A | 44 | 100% |  | 郦哲聪; 周德阳 | 10h | 10h | 甘特图v0.0.4 | 甘特图v0.1.0 |
| 46 | 2.5.6 | 甘特图v0.1.1 | milestone, manual | 0h | 2018-10-31 18:00 A | 2018-10-31 20:00 A | 45 | 100% |  | 王飞钢 |  |  | 甘特图v0.1.0 | 甘特图v0.1.1 |
| 47 | 2.5.7 | 甘特图v0.1.2 | manual | 3h | 2018-10-31 20:00 A | 2018-11-02 21:00 A | 46 | 100% |  | 王飞钢 | 15h | 15h | 甘特图v0.1.1 | 甘特图v0.1.2 |
| 48 | 2.5.8 | 甘特图v0.1.3 | manual | 2h | 2018-11-12 20:00 A | 2018-11-13 21:00 A | 47 | 100% |  | 王飞钢 | 11h | 11h | 甘特图v0.1.2 | 甘特图v0.1.3 |
| 49 | 2.5.9 | 甘特图v0.1.4 | manual | 2h | 2018-11-17 08:00 A | 2018-11-17 10:00 A | 48 | 100% |  | 王飞钢; 周德阳 | 2h | 2h | 甘特图v0.1.3 | 甘特图v0.1.4 |
| 50 | 2.5.10 | 甘特图v0.1.5 | manual | 2h | 2018-11-26 14:00 A | 2018-11-26 16:00 A | 49 | 100% |  | 周德阳 | 2h | 2h | 甘特图v0.1.4 | 甘特图v0.1.5 |
| 51 | 2.5.11 | 甘特图v0.1.6 | manual | 2h | 2018-12-14 14:00 A | 2018-12-14 16:00 A | 50 | 100% |  | 周德阳 | 2h | 2h | 甘特图v0.1.5 | 甘特图v0.1.6 |
| 52 | 2.5.12 | 甘特图v0.1.7 | manual | 2h | 2018-12-26 08:00 A | 2018-12-26 10:00 A | 51 | 100% |  | 周德阳 | 2h | 2h | 甘特图v0.1.6 | 甘特图v0.1.7 |
| 53 | 2.5.13 | 甘特图v1.0.0 | manual | 8h | 2019-01-13 08:00 A | 2019-01-13 16:00 A | 52 | 100% |  | 周德阳 | 8h | 8h | 甘特图v0.1.7 | 甘特图v1.0.0 |

| ID | WBS | Task | Type | Duration | Start | Finish | Predecessors | Complete | Actual start | Actual finish | Resources | Work | Actual work | 输入 | 输出 |
| --- | --- | --- | --- | --- | --- | --- | --- | --- | --- | --- | --- | --- | --- | --- | --- |
| 54 | 3 | **项目执行** |  | 202h | 2018-09-26 20:00 A | 2019-01-14 21:00 A |  | 100% |  |  |  | 481.5h | 481.5h |  |  |
| 55 | 3.1 | **需求获取** |  | 69h | 2018-09-27 17:00 A | 2018-11-03 18:00 |  | 100% |  | 2018-12-05 09:00 |  | 30h | 30h |  |  |
| 56 | 3.1.1 | **系统搭建及分析** |  | 49d | 2018-09-27 17:00 A | 2018-10-23 21:00 A |  | 100% |  |  |  | 24h | 24h |  |  |
| 57 | 3.1.1.1 | 获取系统源代码 | manual | 1d | 2018-09-27 17:00 A | 2018-09-27 18:00 A | 232 | 100% |  |  | 冯一鸣; 郦哲聪; 刘乐威; 王飞钢; 周德阳 | 5h | 5h | 系统源代码 | 系统源代码 |
| 58 | 3.1.1.2 | 搭建系统 | manual | 1d | 2018-10-09 09:00 A | 2018-10-09 10:00 A | 57, 20 | 100% |  |  | 冯一鸣 | 1h | 1h | 系统源代码 | 可运行的环境 |
| 59 | 3.1.1.3 | 搭建系统(系统bug修复） | manual | 4d | 2018-10-10 13:30 A | 2018-10-10 17:30 A | 58 | 100% |  |  | 冯一鸣; 周德阳 | 8h | 8h | 可运行的环境 | 可运行的环境(修复) |
| 60 | 3.1.1.4 | 分析系统 | manual | 3d | 2018-10-15 20:00 A | 2018-10-17 21:00 A | 59 | 100% |  |  | 郦哲聪; 冯一鸣 | 6h | 6h | 可运行的环境(修复) | 功能需求 |
| 61 | 3.1.1.5 | 分析系统(画出用例图） | manual | 2d | 2018-10-22 20:00 A | 2018-10-23 21:00 A | 60 | 100% |  |  | 冯一鸣; 郦哲聪 | 4h | 4h | 可运行的环境(修复) | 功能需求用例图 |
| 62 | 3.1.2 | **获取需求** |  | 13h | 2018-10-18 17:00 | 2018-10-21 18:00 |  | 100% | 2018-11-03 08:00 | 2018-12-05 09:00 |  | 6h | 6h |  |  |
| 63 | 3.1.2.1 | 定义愿景和范围v0.1.0 | milestone, manual | 1h | 2018-11-03 08:00 A | 2018-11-03 09:00 A | 217, 218 | 100% |  |  | 冯一鸣 | 1h | 1h | 业务需求、功能需求 | 定义愿景和范围v0.1.0 |
| 64 | 3.1.2.2 | 定义愿景和范围v0.1.1 | manual | 1h | 2018-11-12 08:00 A | 2018-11-12 09:00 A | 63 | 100% |  |  | 冯一鸣 | 1h | 1h | 愿景和范围文档,增加bbs | 定义愿景和范围v0.1.1 |
| 65 | 3.1.2.3 | 定义愿景和范围v0.1.2 | manual | 1h | 2018-11-17 08:00 A | 2018-11-17 09:00 A | 64 | 100% |  |  | 刘乐威 | 1h | 1h | 修改封面及页码 | 定义愿景和范围v0.1.2 |
| 66 | 3.1.2.4 | 定义愿景和范围v0.1.3 | manual | 1h | 2018-12-05 08:00 A | 2018-12-05 09:00 A | 65 | 100% |  |  | 冯一鸣; 周德阳 | 1h | 1h | 根据案例拥有者身份的提出，在文档中添加有关于案例拥有者身份的相关内容。对特性树图进行文字解释 | 定义愿景和范围v0.1.3 |
| 67 | 3.1.2.5 | 识别用户群 | manual | 1h | 2018-11-15 08:00 A | 2018-11-15 09:00 A | 215 | 100% |  |  | 郦哲聪 [50%] | 0.5h | 0.5h | 业务需求、功能需求 | 用户类型及特点 |
| 68 | 3.1.2.6 | 选择用户代表 | manual | 1h | 2018-11-15 08:00 A | 2018-11-15 09:00 A | 215 | 100% |  |  | 郦哲聪 [50%] | 0.5h | 0.5h | 用户类型及特点文档 | 用户代表表 |
| 69 | 3.1.2.7 | 识别用户需求 | manual | 1h | 2018-11-15 08:00 A | 2018-11-15 09:00 A | 215 | 100% |  |  | 周德阳 | 1h | 1h | 业务需求、功能需求 | 需求用例初稿 |
| 70 | 3.2 | **需求分析** |  | 78h | 2018-11-22 08:00 | 2018-12-27 21:00 |  | 100% | 2018-10-13 15:00 | 2019-01-04 18:00 |  | 119h | 119h |  |  |
| 71 | 3.2.1 | **可行性分析报告** |  | 85d | 2018-10-13 15:00 A | 2018-11-25 21:00 A |  | 100% |  |  |  | 18h | 18h |  |  |
| 72 | 3.2.1.1 | 可行性分析报告v0.1.0 | milestone, manual | 1d | 2018-10-13 15:00 A | 2018-10-13 16:00 A |  | 100% |  |  | 冯一鸣; 郦哲聪; 刘乐威; 王飞钢; 周德阳 | 5h | 5h | 任务书 | 可行性分析报告v0.1.0 |
| 73 | 3.2.1.2 | 可行性分析报告v0.1.1 | manual | 1d | 2018-11-20 14:00 A | 2018-11-20 15:00 A | 72 | 100% |  |  | 冯一鸣; 刘乐威; 王飞钢; 周德阳 | 4h | 4h | 可行性分析报告v0.1.0 | 可行性分析报告v0.1.1 |
| 74 | 3.2.1.3 | 可行性分析报告v0.2.0 | manual | 1d | 2018-10-20 15:00 A | 2018-10-20 16:00 A | 73 | 100% |  |  | 冯一鸣; 郦哲聪; 刘乐威; 王飞钢; 周德阳 | 5h | 5h | 可行性分析报告v0.1.1 | 可行性分析报告v0.2.0 |
| 75 | 3.2.1.4 | 可行性分析报告v0.2.1 | manual | 1d | 2018-10-26 20:00 A | 2018-10-26 21:00 A | 74 | 100% |  |  | 周德阳 | 1h | 1h | 可行性分析报告v0.2.0 | 可行性分析报告v0.2.1 |
| 76 | 3.2.1.5 | 可行性分析报告v0.2.2 | manual | 1d | 2018-11-03 14:00 A | 2018-11-03 15:00 A | 75 | 100% |  |  | 刘乐威 | 1h | 1h | 可行性分析报告v0.2.1 | 可行性分析报告v0.2.2 |
| 77 | 3.2.1.6 | 可行性分析报告v0.2.3 | manual | 1d | 2018-11-15 15:00 A | 2018-11-15 16:00 A | 76 | 100% |  |  | 刘乐威 | 1h | 1h | 可行性分析报告v0.2.2 | 可行性分析报告v0.2.3 |
| 78 | 3.2.1.7 | 可行性分析报告v0.3.1 | manual | 1h | 2018-11-25 20:00 A | 2018-11-25 21:00 A | 77 | 100% |  |  | 郦哲聪 | 1h | 1h | 可行性分析报告v0.2.2 | 可行性分析报告v0.3.1 |

| ID | WBS | Task | Type | Duration | Start | Finish | Predecessors | Complete | Actual start | Actual finish | Resources | Work | Actual work | 输入 | 输出 |
| --- | --- | --- | --- | --- | --- | --- | --- | --- | --- | --- | --- | --- | --- | --- | --- |
| 79 | 3.2.2 | **建立界面原型** |  | 33h | 2018-11-03 11:00 A | 2018-11-17 18:00 |  | 100% |  | 2019-01-04 18:00 |  | 91.5h | 91.5h |  |  |
| 80 | 3.2.2.1 | **界面原型v0.1.x** |  | 13h | 2018-11-03 11:00 A | 2018-11-06 21:00 |  | 100% |  | 2018-11-17 12:00 |  | 31h | 31h |  |  |
| 81 | 3.2.2.1.1 | 界面原型v0.1.0 | milestone, manual | 2h | 2018-11-03 11:00 A | 2018-11-03 13:00 A | 63 | 100% |  |  | 郦哲聪 [50%]; 冯一鸣 [50%]; 刘乐威 [50%]; 王飞钢 [50%]; 周德阳 [50%] | 5h | 5h | 业务需求、功能需求 | UI原型首页 |
| 82 | 3.2.2.1.2 | 界面原型v0.1.1 | manual | 5h | 2018-11-10 15:00 A | 2018-11-11 16:00 A | 63, 81 | 100% |  |  | 冯一鸣; 郦哲聪 | 13h | 13h | 业务需求、功能需求 | 学生界面 |
| 83 | 3.2.2.1.3 | 界面原型v0.1.2 | manual | 2h | 2018-11-15 20:00 A | 2018-11-16 21:00 A | 63, 82 | 100% |  |  | 冯一鸣; 郦哲聪 | 4h | 4h | 业务需求、功能需求 | 学生界面 |
| 84 | 3.2.2.1.4 | 界面原型v0.1.3 | manual | 4h | 2018-11-17 08:00 A | 2018-11-17 12:00 A | 63, 83 | 100% |  |  | 冯一鸣 [50%]; 郦哲聪 [50%]; 刘乐威 [50%]; 王飞钢 [50%]; 周德阳 [50%] | 9h | 9h | 业务需求、功能需求 | 学生界面 |
| 85 | 3.2.2.2 | **界面原型v0.2.x** |  | 23h | 2018-11-18 13:00 A | 2018-11-30 21:00 |  | 100% |  | 2018-12-16 13:00 |  | 37.5h | 37.5h |  |  |
| 86 | 3.2.2.2.1 | 界面原型-bbs | manual | 5h | 2018-11-18 13:00 A | 2018-11-18 18:00 A | 84, 63 | 100% |  |  | 冯一鸣 | 5h | 5h | 业务需求、功能需求 | 学生界面 |
| 87 | 3.2.2.2.2 | 界面原型-实例管理 | manual | 5h | 2018-11-18 13:00 A | 2018-11-18 18:00 A | 84, 63 | 100% |  |  | 郦哲聪; 周德阳 | 10h | 10h | 业务需求、功能需求 | 学生界面 |
| 88 | 3.2.2.2.3 | 界面原型-个人中心 | manual | 5h | 2018-11-18 13:00 A | 2018-11-18 18:00 A | 84, 63 | 100% |  |  | 刘乐威; 王飞钢 | 10h | 10h | 业务需求、功能需求 | 学生界面 |
| 89 | 3.2.2.2.4 | 界面原型v0.2.1 | manual | 3h | 2018-12-07 08:00 A | 2018-12-07 11:00 A | 63 | 100% |  |  | 冯一鸣 [50%] | 2.5h | 2.5h | 业务需求、功能需求 | 管理员界面 |
| 90 | 3.2.2.2.5 | 界面原型v0.2.2 | manual | 5h | 2018-12-16 08:00 A | 2018-12-16 13:00 A | 89, 63 | 100% |  |  | 郦哲聪; 周德阳 | 10h | 10h | 业务需求、功能需求 | 教师界面 |
| 91 | 3.2.2.3 | **界面原型v0.3.x** |  | 6h | 2018-12-17 13:00 A | 2018-12-17 19:00 |  | 100% |  | 2018-12-18 20:00 |  | 6h | 6h |  |  |
| 92 | 3.2.2.3.1 | 界面原型v0.3.0 | manual | 3h | 2018-12-17 13:00 A | 2018-12-17 16:00 A | 222, 90 | 100% |  |  | 郦哲聪 | 3h | 3h | 界面原型v0.2.2,管理员访谈 | 界面原型v0.3.0 |
| 93 | 3.2.2.3.2 | 界面原型v0.3.1 | manual | 3h | 2018-12-18 17:00 A | 2018-12-18 20:00 A | 223, 92 | 100% |  |  | 郦哲聪 | 3h | 3h | 界面原型v0.3.0,教师第一次确认 | 界面原型v0.3.1 |
| 94 | 3.2.2.4 | **界面原型v0.4.x** |  | 3h | 2018-12-21 20:00 | 2018-12-22 16:00 |  | 100% | 2018-12-19 20:00 | 2018-12-19 23:00 |  | 3h | 3h |  |  |
| 95 | 3.2.2.4.1 | 界面原型v0.4.0 | manual | 3h | 2018-12-19 20:00 A | 2018-12-19 23:00 A | 224, 93 | 100% |  |  | 郦哲聪 | 3h | 3h | 界面原型v0.3.1,确认风格 | 界面原型v0.4.0 |
| 96 | 3.2.2.5 | **界面原型v0.5.x** |  | 3h | 2018-12-21 14:00 A | 2018-12-21 17:00 A |  | 100% |  |  |  | 3h | 3h |  |  |
| 97 | 3.2.2.5.1 | 界面原型v0.5.0 | manual | 3h | 2018-12-21 14:00 A | 2018-12-21 17:00 A | 225, 95 | 100% |  |  | 郦哲聪 | 3h | 3h | 界面原型v0.4.0+管理员二次确认 | 界面原型v0.5.0 |
| 98 | 3.2.2.6 | **界面原型v0.6.x** |  | 5h | 2018-12-21 20:00 A | 2018-12-22 18:00 |  | 100% |  | 2018-12-27 16:00 |  | 5h | 5h |  |  |
| 99 | 3.2.2.6.1 | 界面原型v0.6.0 | manual | 2h | 2018-12-21 20:00 A | 2018-12-22 15:00 A | 97 | 100% |  |  | 郦哲聪 | 2h | 2h | 界面原型v0.5.0 | 界面原型v0.6.0 |
| 100 | 3.2.2.6.2 | 界面原型v0.6.1 | manual | 3h | 2018-12-27 13:00 A | 2018-12-27 16:00 A | 99, 226 | 100% |  |  | 郦哲聪 | 3h | 3h | 界面原型v0.6.0 | 界面原型v0.6.1 |
| 101 | 3.2.2.7 | **界面原型v0.7.x** |  | 3d | 2018-12-29 15:00 A | 2018-12-29 18:00 A |  | 100% |  |  |  | 3h | 3h |  |  |
| 102 | 3.2.2.7.1 | 界面原型v0.7.0 | manual | 3h | 2018-12-29 15:00 A | 2018-12-29 18:00 A | 100, 227 | 100% |  |  | 郦哲聪 | 3h | 3h | 界面原型v0.6.1+管理员最终确认 | 界面原型v0.7.0 |

| ID | WBS | Task | Type | Duration | Start | Finish | Predecessors | Complete | Actual start | Actual finish | Resources | Work | Actual work | 输入 | 输出 |
| --- | --- | --- | --- | --- | --- | --- | --- | --- | --- | --- | --- | --- | --- | --- | --- |
| 103 | 3.2.2.8 | **界面原型v1.0.0** |  | 3h | 2019-01-04 15:00 A | 2019-01-04 18:00 A |  | 100% |  |  |  | 3h | 3h |  |  |
| 104 | 3.2.2.8.1 | 界面原型v1.0.0 | manual | 3h | 2019-01-04 15:00 A | 2019-01-04 18:00 A | 102, 228 | 100% |  |  | 郦哲聪 | 3h | 3h | 界面原型v0.7.0 | 界面原型v1.0.0 |
| 105 | 3.2.3 | 应用环境建模 | manual | 1h | 2018-11-22 08:00 A | 2018-11-22 09:00 A | 55 | 100% |  |  | 王飞钢 [50%] | 0.5h | 0.5h | 原有系统 | 系统环境关系图 |
| 106 | 3.2.4 | PBCLS的LOGO | manual | 1h | 2018-11-03 10:00 A | 2018-11-03 11:00 A | 241 | 100% |  |  | 冯一鸣; 郦哲聪; 刘乐威; 王飞钢; 周德阳 | 5h | 5h | 小组讨论会成果 | PBCLS的LOGO |
| 107 | 3.2.5 | 数据字典(初步) | manual | 1h | 2018-11-30 20:00 A | 2018-11-30 21:00 A | 69 | 100% |  |  | 冯一鸣; 郦哲聪 | 0.5h | 0.5h | 业务需求、功能需求 | 数据字典，数据库表 |
| 108 | 3.2.6 | 数据字典完善 | manual | 1h | 2018-12-01 20:00 A | 2018-12-01 21:00 A | 107 | 100% |  |  | 冯一鸣; 郦哲聪 | 0.5h | 0.5h | 业务需求、功能需求 | 数据字典，数据库表 |
| 109 | 3.2.7 | 数据库设计 | manual | 1h | 2018-12-07 15:00 A | 2018-12-07 16:00 A | 107, 108, 69 | 100% |  |  | 周德阳 | 1h | 1h | 数据字典 | ER图 |
| 110 | 3.2.8 | 分析可实现性 | manual | 1h | 2018-11-03 15:00 A | 2018-11-03 16:00 A | 69 | 100% |  |  | 王飞钢 [50%] | 0.5h | 0.5h | 业务需求、功能需求 | 去除当前不可行的需求 |
| 111 | 3.2.9 | 分析接口 | manual | 1h | 2018-11-03 15:00 A | 2018-11-03 16:00 A | 69 | 100% |  |  | 郦哲聪 [50%]; 周德阳 [50%] | 1h | 1h | 业务需求、功能需求、原系统 | 接口分析文档 |
| 112 | 3.2.10 | 将需求分配给子系统 | manual | 1h | 2018-11-03 15:00 A | 2018-11-03 16:00 A | 69 | 100% |  |  | 刘乐威 [50%] | 0.5h | 0.5h | 业务需求、功能需求、原系统 | 层次方框图 |
| 113 | 3.3 | **需求规格说明** |  | 101h | 2018-11-29 08:00 | 2019-01-14 21:00 |  | 100% | 2018-12-01 16:00 | 2019-01-01 21:00 |  | 108h | 108h |  |  |
| 114 | 3.3.1 | **需求规格说明书v0.1.0** |  | 34d | 2018-12-01 16:00 A | 2018-12-19 17:00 A |  | 100% |  |  |  | 34h | 34h |  |  |
| 115 | 3.3.1.1 | 明确需求来源 | manual | 1h | 2018-12-01 16:00 A | 2018-12-01 17:00 A | 109 | 100% |  |  | 郦哲聪 | 1h | 1h | 业务需求、功能需求 | 明确的功能需求 |
| 116 | 3.3.1.2 | 为每个需求分配唯一标识 | manual | 1h | 2018-12-01 16:00 A | 2018-12-01 17:00 A | 109 | 100% |  |  | 冯一鸣; 刘乐威; 王飞钢; 周德阳 | 4h | 4h | 明确的功能需求 | 需求说明 |
| 117 | 3.3.1.3 | 记录业务规则 | manual | 1h | 2018-12-08 16:00 A | 2018-12-08 17:00 A | 109 | 100% |  |  | 周德阳 | 1h | 1h | 业务需求 | 业务规则表 |
| 118 | 3.3.1.4 | 记录非功能需求 | manual | 1h | 2018-12-08 16:00 A | 2018-12-08 17:00 A | 109 | 100% |  |  | 王飞钢 | 1h | 1h | 非功能需求 | 非功能需求文档 |
| 119 | 3.3.1.5 | 管理员用户的顶层用例图顶层 | manual | 1h | 2018-12-02 20:00 A | 2018-12-02 21:00 A | 108 | 100% |  |  | 冯一鸣 | 1h | 1h | 数据字典 | 用例场景,用例图 |
| 120 | 3.3.1.6 | 教师用户的顶层用例图顶层 | manual | 1h | 2018-12-02 20:00 A | 2018-12-02 21:00 A | 108 | 100% |  |  | 周德阳 | 1h | 1h | 数据字典 | 用例场景,用例图 |
| 121 | 3.3.1.7 | 学生用户的顶层用例图顶层 | manual | 1h | 2018-12-02 20:00 A | 2018-12-02 21:00 A | 108 | 100% |  |  | 王飞钢 | 1h | 1h | 数据字典 | 用例场景,用例图 |
| 122 | 3.3.1.8 | 案例拥有者用户的顶层用例图顶层 | manual | 1h | 2018-12-02 20:00 A | 2018-12-02 21:00 A | 108 | 100% |  |  | 刘乐威 | 1h | 1h | 数据字典 | 用例场景,用例图 |
| 123 | 3.3.1.9 | 管理员用户的顶层用例图（分） | manual | 2h | 2018-12-12 19:00 A | 2018-12-12 21:00 A | 119 | 100% |  |  | 冯一鸣 | 2h | 2h | 用例场景,用例图 | 用例场景,用例图细分 |
| 124 | 3.3.1.10 | 教师用户的顶层用例图顶层(分） | manual | 2h | 2018-12-12 19:00 A | 2018-12-12 21:00 A | 120 | 100% |  |  | 周德阳 | 2h | 2h | 用例场景,用例图 | 用例场景,用例图细分 |
| 125 | 3.3.1.11 | 学生用户的顶层用例图顶层(分） | manual | 2h | 2018-12-12 19:00 A | 2018-12-12 21:00 A | 121 | 100% |  |  | 王飞钢 | 2h | 2h | 用例场景,用例图 | 用例场景,用例图细分 |
| 126 | 3.3.1.12 | 案例拥有者用户的顶层用例图顶层(分） | manual | 2h | 2018-12-12 19:00 A | 2018-12-12 21:00 A | 122 | 100% |  |  | 刘乐威 | 2h | 2h | 用例场景,用例图 | 用例场景,用例图细分 |
| 127 | 3.3.1.13 | 管理员用户的顶层用例图(交叉修改) | manual | 3h | 2018-12-18 18:00 A | 2018-12-18 21:00 A | 123 | 100% |  |  | 周德阳 | 3h | 3h | 用例场景,用例图细分 | 管理员用例图整合 |
| 128 | 3.3.1.14 | 教师用户的顶层用例图顶层(交叉修改） | manual | 3h | 2018-12-18 18:00 A | 2018-12-18 21:00 A | 124 | 100% |  |  | 冯一鸣 | 3h | 3h | 用例场景,用例图细分 | 教师用例图整合 |
| 129 | 3.3.1.15 | 学生用户的顶层用例图顶层(交叉修改） | manual | 3h | 2018-12-18 18:00 A | 2018-12-18 21:00 A | 125 | 100% |  |  | 刘乐威 | 3h | 3h | 用例场景,用例图细分 | 学生用例图整合 |
| 130 | 3.3.1.16 | 案例拥有者用户的顶层用例图顶层(交叉修改） | manual | 3h | 2018-12-18 18:00 A | 2018-12-18 21:00 A | 126 | 100% |  |  | 王飞钢 | 3h | 3h | 用例场景,用例图细分 | 案例拥有者用例图整合 |
| 131 | 3.3.1.17 | 整合需求规格说明书 | manual | 3h | 2018-12-19 14:00 A | 2018-12-19 17:00 A | 130, 129, 128, 127, 115, 116, 117, 118 | 100% |  |  | 刘乐威 | 3h | 3h | 需求说明、业务规则表、非功能需求文档、系统流程图、数据流图 | 需求规格说明书v0.1.0 |
| 132 | 3.3.2 | 需求规格说明书v0.1.1 | manual | 3h | 2018-12-25 17:00 A | 2018-12-25 20:00 A | 131 | 100% |  |  | 刘乐威 | 3h | 3h | SRS修改参考资料、增添数据字典、修改性能需求 | 需求规格说明书v0.1.1 |

| ID | WBS | Task | Type | Duration | Start | Finish | Predecessors | Complete | Actual start | Actual finish | Resources | Work | Actual work | 输入 | 输出 |
| --- | --- | --- | --- | --- | --- | --- | --- | --- | --- | --- | --- | --- | --- | --- | --- |
| 133 | 3.3.3 | **需求规格说明书v0.2.0** |  | 5h | 2018-12-27 14:00 A | 2018-12-27 19:00 A |  | 100% |  |  |  | 20h | 20h |  |  |
| 134 | 3.3.3.1 | 学生用例修改 | manual | 5h | 2018-12-27 14:00 A | 2018-12-27 19:00 A | 132 | 100% |  |  | 王飞钢 | 5h | 5h | 需求规格说明书v0.1.1学生用例 | 需求规格说明书v0.2.0学生用例 |
| 135 | 3.3.3.2 | 教师用例修改 | manual | 5h | 2018-12-27 14:00 A | 2018-12-27 19:00 A | 132 | 100% |  |  | 周德阳 | 5h | 5h | 需求规格说明书v0.1.1教师用例 | 需求规格说明书v0.2.0教师用例 |
| 136 | 3.3.3.3 | 管理员用例修改 | manual | 5h | 2018-12-27 14:00 A | 2018-12-27 19:00 A | 132 | 100% |  |  | 冯一鸣 | 5h | 5h | 需求规格说明书v0.1.1管理员用例 | 需求规格说明书v0.2.0管理员用例 |
| 137 | 3.3.3.4 | 案例拥有者用例修改 | manual | 5h | 2018-12-27 14:00 A | 2018-12-27 19:00 A | 132 | 100% |  |  | 刘乐威 | 5h | 5h | 需求规格说明书v0.1.1案例拥有者用例 | 需求规格说明书v0.2.0案例拥有者用例 |
| 138 | 3.3.4 | **需求规格说明书v0.2.1** |  | 4d | 2018-12-30 14:00 A | 2018-12-30 20:00 A |  | 100% |  |  |  | 24h | 24h |  |  |
| 139 | 3.3.4.1 | 学生用例修改 | manual | 6h | 2018-12-30 14:00 A | 2018-12-30 20:00 A | 134, 148 | 100% |  |  | 王飞钢 | 6h | 6h | 需求规格说明书v0.2.0学生用例 | 需求规格说明书v0.2.1学生用例 |
| 140 | 3.3.4.2 | 教师用例修改 | manual | 6h | 2018-12-30 14:00 A | 2018-12-30 20:00 A | 135, 149 | 100% |  |  | 周德阳 | 6h | 6h | 需求规格说明书v0.2.0教师用例 | 需求规格说明书v0.2.1教师用例 |
| 141 | 3.3.4.3 | 管理员用例修改 | manual | 6h | 2018-12-30 14:00 A | 2018-12-30 20:00 A | 136, 150 | 100% |  |  | 冯一鸣 | 6h | 6h | 需求规格说明书v0.2.0管理员用例 | 需求规格说明书v0.2.1管理员用例 |
| 142 | 3.3.4.4 | 案例拥有者用例修改 | manual | 6h | 2018-12-30 14:00 A | 2018-12-30 20:00 A | 137, 151 | 100% |  |  | 刘乐威 | 6h | 6h | 需求规格说明书v0.2.0案例拥有者用例 | 需求规格说明书v0.2.1案例拥有者用例 |
| 143 | 3.3.5 | **需求规格说明书v0.2.2** |  | 2h | 2018-12-31 14:00 A | 2018-12-31 16:00 |  | 100% |  | 2019-01-01 21:00 |  | 7h | 7h |  |  |
| 144 | 3.3.5.1 | 修改业务级数字字典 | manual | 2h | 2018-12-31 14:00 A | 2018-12-31 16:00 A | 138, 108 | 100% |  |  | 刘乐威 | 2h | 2h | 数据字典(旧) | 数据字典 |
| 145 | 3.3.5.2 | E-R图 | manual | 2h | 2018-12-31 20:00 A | 2019-01-01 21:00 A | 144 | 100% |  |  | 周德阳 | 2h | 2h | 数据字典 | E-R图 |
| 146 | 3.3.5.3 | 增加时序图 | manual | 1d | 2018-12-31 14:00 A | 2018-12-31 15:00 A | 138 | 100% |  |  | 冯一鸣; 王飞钢; 周德阳 | 3h | 3h | 用例 | 时序图 |
| 147 | 3.3.6 | **需求规格说明书v0.2.3** |  | 5h | 2018-12-27 14:00 A | 2018-12-27 19:00 A |  | 100% |  |  |  | 20h | 20h |  |  |
| 148 | 3.3.6.1 | 学生用例修改 | manual | 5h | 2018-12-27 14:00 A | 2018-12-27 19:00 A | 132 | 100% |  |  | 王飞钢 | 5h | 5h | 需求规格说明书v0.2.2学生用例 | 需求规格说明书v0.2.3学生用例 |
| 149 | 3.3.6.2 | 教师用例修改 | manual | 5h | 2018-12-27 14:00 A | 2018-12-27 19:00 A | 132 | 100% |  |  | 周德阳 | 5h | 5h | 需求规格说明书v0.2.2教师用例 | 需求规格说明书v0.2.3教师用例 |
| 150 | 3.3.6.3 | 管理员用例修改 | manual | 5h | 2018-12-27 14:00 A | 2018-12-27 19:00 A | 132 | 100% |  |  | 冯一鸣 | 5h | 5h | 需求规格说明书v0.2.2管理员用例 | 需求规格说明书v0.2.3管理员用例 |
| 151 | 3.3.6.4 | 案例拥有者用例修改 | manual | 5h | 2018-12-27 14:00 A | 2018-12-27 19:00 A | 132 | 100% |  |  | 刘乐威 | 5h | 5h | 需求规格说明书v0.2.2案例拥有者用例 | 需求规格说明书v0.2.3案例拥有者用例 |
| 152 | 3.4 | **需求管理** |  | 10h | 2018-10-21 20:00 A | 2018-10-27 18:00 |  | 100% |  | 2019-01-12 21:00 |  | 19h | 19h |  |  |
| 153 | 3.4.1 | 配置管理规范文档 | manual | 2h | 2018-10-21 20:00 A | 2018-10-22 21:00 A | 238 | 100% |  |  | 周德阳 | 2h | 2h | 会议纪要 | 配置管理规范文档 |
| 154 | 3.4.2 | 配置管理规范文档更新 | manual | 1h | 2018-11-22 20:00 A | 2018-11-22 21:00 A | 153 | 100% |  |  | 周德阳 | 1h | 1h | 配置管理规范文档 | 配置管理规范文档更新 |
| 155 | 3.4.3 | 文档编写规范 | manual | 1d | 2018-10-22 20:00 A | 2018-10-22 21:00 A | 238 | 100% |  |  | 刘乐威 | 1h | 1h | 会议纪要 | 文档编写规范 |
| 156 | 3.4.4 | **用户群分类** |  | 64h | 2018-12-07 20:00 | 2019-01-09 21:00 A |  | 100% | 2019-01-07 20:00 |  |  | 2h | 2h |  |  |
| 157 | 3.4.4.1 | 用户群分类v0.1.0 | manual | 1h | 2019-01-07 20:00 A | 2019-01-07 21:00 A | 131 | 100% |  |  | 周德阳 | 1h | 1h | 业务需求,项目干系人 | 用户群分类v0.1.0 |
| 158 | 3.4.4.2 | 用户群分类v0.1.1 | manual | 1h | 2019-01-09 20:00 A | 2019-01-09 21:00 A | 157 | 100% |  |  | 周德阳 | 1h | 1h | 用户群分类v0.1.0 | 用户群分类v0.1.1 |

| ID | WBS | Task | Type | Duration | Start | Finish | Predecessors | Complete | Actual start | Actual finish | Resources | Work | Actual work | 输入 | 输出 |
| --- | --- | --- | --- | --- | --- | --- | --- | --- | --- | --- | --- | --- | --- | --- | --- |
| 159 | 3.4.5 | **CCB章程** |  | 81h | 2018-10-07 20:00 | 2018-11-21 21:00 |  | 100% | 2019-01-09 20:00 | 2019-01-12 21:00 |  | 2h | 2h |  |  |
| 160 | 3.4.5.1 | **CCB章程v0.1.0** |  | 1d | 2018-10-07 20:00 | 2018-10-07 21:00 |  | 100% | 2019-01-09 20:00 | 2019-01-09 21:00 |  | 1h | 1h |  |  |
| 161 | 3.4.5.1.1 | 建立变更控制流程 | manual | 1h | 2019-01-09 20:00 A | 2019-01-09 21:00 A | 167 | 100% |  |  | 冯一鸣 | 1h | 1h | 用户群分类 | CCB章程v0.1.0 |
| 162 | 3.4.5.2 | CCB章程v0.1.1 | manual | 1d | 2019-01-12 20:00 A | 2019-01-12 21:00 A | 160 | 100% |  |  | 冯一鸣 | 1h | 1h | CCB章程v0.1.0 | CCB章程v0.1.1 |
| 163 | 3.4.6 | 变更申请书 | manual | 2h | 2019-01-06 20:00 A | 2019-01-07 21:00 A | 147 | 100% |  |  | 冯一鸣 | 2h | 2h | SRS | 变更申请书 |
| 164 | 3.4.7 | **分析变更影响** |  | 5h | 2019-01-07 17:00 | 2019-01-08 21:00 A |  | 100% | 2019-01-07 20:00 |  |  | 2h | 2h |  |  |
| 165 | 3.4.7.1 | 变更影响分析报告 | manual | 1d | 2019-01-07 20:00 A | 2019-01-07 21:00 A | 160 | 100% |  |  | 冯一鸣 | 1h | 1h | CCB章程v0.1.0 | 变更影响分析报告 |
| 166 | 3.4.7.2 | 问题检查表 | manual | 1h | 2019-01-08 20:00 A | 2019-01-08 21:00 A | 160 | 100% |  |  | 冯一鸣 | 1h | 1h | CCB章程v0.1.0 | 问题检查表 |
| 167 | 3.4.8 | 建立基线，管理需求版本 | manual | 2h | 2019-01-09 20:00 A | 2019-01-10 21:00 A | 259 | 100% |  |  | 冯一鸣 | 2h | 2h | SRS | SRS |
| 168 | 3.4.9 | 维护需求变更记录 | manual | 2h | 2019-01-09 20:00 A | 2019-01-10 21:00 A | 164, 259, 163 | 100% |  |  | 冯一鸣 | 2h | 2h | 需求变更请求 | 变更控制文档 |
| 169 | 3.4.10 | 维护需求可跟踪矩阵 | manual | 3h | 2019-01-08 17:00 A | 2019-01-08 20:00 A | 164 | 100% |  |  | 冯一鸣 | 3h | 3h | 需求跟踪 | 需求跟踪矩阵 |
| 170 | 3.5 | **UML翻转PPT** |  | 135h | 2018-10-11 20:00 A | 2018-12-16 12:00 |  | 100% |  | 2018-12-16 10:00 |  | 42h | 42h |  |  |
| 171 | 3.5.1 | 第一次翻转 | manual | 6h | 2018-10-11 20:00 A | 2018-10-13 18:00 A | 235SS | 100% |  |  | 郦哲聪 | 6h | 6h | UML学习报告 | UML概述PPT |
| 172 | 3.5.2 | 第一次翻转修改 | manual | 1h | 2018-10-19 20:00 A | 2018-10-19 21:00 A | 171 | 100% |  |  | 郦哲聪 | 1h | 1h | UML概述PPT | UML概述PPT(修改） |
| 173 | 3.5.3 | 第二次翻转 | manual | 6h | 2018-10-18 20:00 A | 2018-10-20 18:00 A | 237SS | 100% |  |  | 郦哲聪 | 6h | 6h | UML学习报告 | UML工具PPT |
| 174 | 3.5.4 | 第二次翻转修改 | manual | 1h | 2018-10-26 10:00 A | 2018-10-26 11:00 A | 173 | 100% |  |  | 冯一鸣 | 1h | 1h | UML工具PPT | UML工具PPT(修改—） |
| 175 | 3.5.5 | 第三次翻转 | manual | 3h | 2018-10-25 08:00 A | 2018-10-25 11:00 A | 239SS | 100% |  |  | 刘乐威 | 3h | 3h | UML学习报告 | UML基础1PPT |
| 176 | 3.5.6 | 第三次翻转修改 | manual | 1h | 2018-11-01 20:00 A | 2018-11-01 21:00 A | 175 | 100% |  |  | 刘乐威; 郦哲聪 | 1h | 1h | UML基础1PPT | UML基础1PPT(修改） |
| 177 | 3.5.7 | 第四次翻转 | manual | 6h | 2018-11-01 08:00 A | 2018-11-01 14:00 A | 243SS | 100% |  |  | 王飞钢 | 6h | 6h | UML学习报告 | UML基础2PPT |
| 178 | 3.5.8 | 第四次翻转修改 | manual | 2h | 2018-11-03 08:00 A | 2018-11-03 10:00 A | 177 | 100% |  |  | 王飞钢 | 2h | 2h | UML基础2PPT | UML基础2PPT(修改） |
| 179 | 3.5.9 | 第五次翻转 | manual | 6h | 2018-12-06 08:00 A | 2018-12-06 14:00 A | 178 | 100% |  |  | 刘乐威 | 6h | 6h | UML学习报告 | UML基础3PPT |
| 180 | 3.5.10 | 第五次翻转修改 | manual | 2h | 2018-12-16 08:00 A | 2018-12-16 10:00 A | 179 | 100% |  |  | 王飞钢 | 2h | 2h | UML基础3PPT | UML基础3PPT(修改） |
| 181 | 3.5.11 | 第六次翻转 | manual | 6h | 2018-12-13 14:00 A | 2018-12-13 20:00 A | 172, 174, 176, 178 | 100% |  |  | 王飞钢 | 6h | 6h | UML学习报告 | UML基础4PPT(应用和问题分析) |
| 182 | 3.5.12 | 第六次翻转修改 | manual | 2h | 2018-12-16 08:00 A | 2018-12-16 10:00 A | 181 | 100% |  |  | 刘乐威 | 2h | 2h | UML基础4PPT(应用和问题分析) | UML基础4PPT(应用和问题分析)修改 |

| ID | WBS | Task | Type | Duration | Start | Finish | Predecessors | Complete | Actual start | Actual finish | Resources | Work | Actual work | 输入 | 输出 |
| --- | --- | --- | --- | --- | --- | --- | --- | --- | --- | --- | --- | --- | --- | --- | --- |
| 183 | 3.6 | **项目管理** |  | 201d | 2018-09-27 17:00 | 2019-01-14 21:00 A |  | 100% | 2018-10-13 15:00 |  |  | 92h | 92h |  |  |
| 184 | 3.6.1 | **项目章程** |  | 4h | 2018-09-27 17:00 | 2018-09-27 21:00 |  | 100% | 2018-10-15 17:00 | 2018-11-25 15:00 |  | 4h | 4h |  |  |
| 185 | 3.6.1.1 | 项目章程v0.1.0 | manual | 1d | 2018-10-15 17:00 A | 2018-10-15 18:00 A |  | 100% |  |  | 冯一鸣 | 1h | 1h | 任务书 | 项目章程v0.1.0 |
| 186 | 3.6.1.2 | 项目章程v0.1.1 | manual | 1d | 2018-11-03 20:00 A | 2018-11-03 21:00 A | 185 | 100% |  |  | 刘乐威 | 1h | 1h | 项目章程v0.1.0 | 项目章程v0.1.1 |
| 187 | 3.6.1.3 | 项目章程v0.1.2 | manual | 1h | 2018-11-15 20:00 A | 2018-11-15 21:00 A | 186 | 100% |  |  | 刘乐威 | 1h | 1h | 项目章程v0.1.1 | 项目章程v0.1.2 |
| 188 | 3.6.1.4 | 项目章程v0.2.0 | manual | 1h | 2018-11-25 14:00 A | 2018-11-25 15:00 A | 187 | 100% |  |  | 刘乐威 | 1h | 1h | 项目章程v0.1.2 | 项目章程v0.2.0 |
| 189 | 3.6.2 | **项目总体计划** |  | 105d | 2018-10-19 08:00 A | 2018-12-14 21:00 A |  | 100% |  |  |  | 13h | 13h |  |  |
| 190 | 3.6.2.1 | 项目总体计划v0.0.1 | manual | 1d | 2018-10-19 08:00 A | 2018-10-19 09:00 A | 237, 185 | 100% |  |  | 冯一鸣; 刘乐威; 王飞钢; 周德阳 | 4h | 4h | 项目章程 | 项目总体计划v0.0.1 |
| 191 | 3.6.2.2 | 项目总体计划v0.1.0 | manual | 1d | 2018-10-20 14:00 A | 2018-10-20 15:00 A | 190 | 100% |  |  | 冯一鸣; 郦哲聪; 刘乐威; 王飞钢; 周德阳 | 5h | 5h | 项目总体计划v0.0.1 | 项目总体计划v0.1.0 |
| 192 | 3.6.2.3 | 项目总体计划v0.1.1 | manual | 1d | 2018-10-26 20:00 A | 2018-10-26 21:00 A | 191 | 100% |  |  | 周德阳 | 1h | 1h | 项目总体计划v0.1.0 | 项目总体计划v0.1.1 |
| 193 | 3.6.2.4 | 项目总体计划v0.1.2 | manual | 1d | 2018-11-03 14:00 A | 2018-11-03 15:00 A | 192 | 100% |  |  | 刘乐威 | 1h | 1h | 项目总体计划v0.1.1 | 项目总体计划v0.1.2 |
| 194 | 3.6.2.5 | 项目总体计划v0.1.3 | manual | 1d | 2018-11-15 15:00 A | 2018-11-15 16:00 A | 193 | 100% |  |  | 刘乐威 | 1h | 1h | 项目总体计划v0.1.2 | 项目总体计划v0.1.3 |
| 195 | 3.6.2.6 | 项目总体计划v0.1.4 | manual | 1d | 2018-12-14 20:00 A | 2018-12-14 21:00 A | 194 | 100% |  |  | 周德阳 | 1h | 1h | 项目总体计划v0.1.3 | 项目总体计划v0.1.4 |
| 196 | 3.6.3 | **可行性分析报告** |  | 85d | 2018-10-13 15:00 A | 2018-11-25 21:00 A |  | 100% |  |  |  | 18h | 18h |  |  |
| 197 | 3.6.3.1 | 可行性分析报告v0.1.0 | manual | 1d | 2018-10-13 15:00 A | 2018-10-13 16:00 A |  | 100% |  |  | 冯一鸣; 郦哲聪; 刘乐威; 王飞钢; 周德阳 | 5h | 5h | 任务书 | 可行性分析报告v0.1.0 |
| 198 | 3.6.3.2 | 可行性分析报告v0.1.1 | manual | 1d | 2018-11-20 14:00 A | 2018-11-20 15:00 A | 197 | 100% |  |  | 冯一鸣; 刘乐威; 王飞钢; 周德阳 | 4h | 4h | 可行性分析报告v0.1.0 | 可行性分析报告v0.1.1 |
| 199 | 3.6.3.3 | 可行性分析报告v0.2.0 | manual | 1d | 2018-10-20 15:00 A | 2018-10-20 16:00 A | 198 | 100% |  |  | 冯一鸣; 郦哲聪; 刘乐威; 王飞钢; 周德阳 | 5h | 5h | 可行性分析报告v0.1.1 | 可行性分析报告v0.2.0 |
| 200 | 3.6.3.4 | 可行性分析报告v0.2.1 | manual | 1d | 2018-10-26 20:00 A | 2018-10-26 21:00 A | 199 | 100% |  |  | 周德阳 | 1h | 1h | 可行性分析报告v0.2.0 | 可行性分析报告v0.2.1 |
| 201 | 3.6.3.5 | 可行性分析报告v0.2.2 | manual | 1d | 2018-11-03 14:00 A | 2018-11-03 15:00 A | 200 | 100% |  |  | 刘乐威 | 1h | 1h | 可行性分析报告v0.2.1 | 可行性分析报告v0.2.2 |
| 202 | 3.6.3.6 | 可行性分析报告v0.2.3 | manual | 1d | 2018-11-15 15:00 A | 2018-11-15 16:00 A | 201 | 100% |  |  | 刘乐威 | 1h | 1h | 可行性分析报告v0.2.2 | 可行性分析报告v0.2.3 |
| 203 | 3.6.3.7 | 可行性分析报告v0.3.1 | manual | 1h | 2018-11-25 20:00 A | 2018-11-25 21:00 A | 202 | 100% |  |  | 郦哲聪 | 1h | 1h | 可行性分析报告v0.2.2 | 可行性分析报告v0.3.1 |
| 204 | 3.6.4 | **质量保证计划** |  | 38d | 2018-10-26 20:00 A | 2018-11-15 15:00 A |  | 100% |  |  |  | 3h | 3h |  |  |
| 205 | 3.6.4.1 | 质量保证计划v0.1.0 | manual | 1d | 2018-10-26 20:00 A | 2018-10-26 21:00 A |  | 100% |  |  | 冯一鸣 | 1h | 1h | 小组讨论结果 | 质量保证计划v0.1.0 |
| 206 | 3.6.4.2 | 质量保证计划v0.1.1 | manual | 1d | 2018-11-03 20:00 A | 2018-11-03 21:00 A | 205 | 100% |  |  | 周德阳 | 1h | 1h | 质量保证计划v0.1.0 | 质量保证计划v0.1.1 |
| 207 | 3.6.4.3 | 质量保证计划v0.1.2 | manual | 1d | 2018-11-15 14:00 A | 2018-11-15 15:00 A | 206 | 100% |  |  | 刘乐威 | 1h | 1h | 质量保证计划v0.1.1 | 质量保证计划v0.1.2 |
| 208 | 3.6.5 | 系统设计与实现计划 | milestone, manual | 5h | 2018-12-29 20:00 A | 2018-12-30 18:00 A | 131 | 100% |  |  | 刘乐威 | 8h | 8h | 系统设计要求和计划 | 系统设计与实现计划 |
| 209 | 3.6.6 | 软件概要设计说明 | milestone, manual | 5h | 2019-01-13 14:00 A | 2019-01-14 21:00 A | 208 | 100% |  |  | 王飞钢 | 11h | 11h | 软件设计说明 | 软件概要设计说明 |
| 210 | 3.6.7 | 测试计划 | milestone, manual | 2h | 2019-01-08 20:00 A | 2019-01-09 21:00 A | 209 | 100% |  |  | 冯一鸣 | 2h | 2h | 测试用例 | 测试计划 |
| 211 | 3.6.8 | 安装部署计划 | milestone, manual | 5h | 2019-01-05 20:00 A | 2019-01-06 18:00 A | 209 | 100% |  |  | 郦哲聪 | 5h | 5h | 安装部署要求 | 安装部署计划 |
| 212 | 3.6.9 | 培训计划 | milestone, manual | 5h | 2019-01-04 20:00 A | 2019-01-05 18:00 A | 209 | 100% |  |  | 王飞钢 | 8h | 8h | 培训要求 | 培训计划 |
| 213 | 3.6.10 | 系统维护计划 | milestone, manual | 5h | 2018-12-28 20:00 A | 2018-12-29 18:00 A | 209 | 100% |  |  | 周德阳 | 5h | 5h | 系统维护要求 | 系统维护计划 |
| 214 | 3.6.11 | 项目总结报告 | milestone, manual | 3h | 2019-01-13 14:00 A | 2019-01-13 17:00 A | 213 | 100% |  |  | 冯一鸣; 郦哲聪; 刘乐威; 王飞钢; 周德阳 | 15h | 15h | 个人总结 | 项目总结报告 |

| ID | WBS | Task | Type | Duration | Start | Finish | Predecessors | Complete | Actual start | Actual finish | Resources | Work | Actual work | 输入 | 输出 |
| --- | --- | --- | --- | --- | --- | --- | --- | --- | --- | --- | --- | --- | --- | --- | --- |
| 215 | 3.7 | **访谈** |  | 14h | 2018-10-18 17:00 | 2018-10-22 21:00 |  | 100% | 2018-09-26 20:00 | 2019-01-03 15:00 |  | 71.5h | 71.5h |  |  |
| 216 | 3.7.1 | 确定项目选题 | manual | 1h | 2018-09-26 20:00 A | 2018-09-26 21:00 A | 1 | 100% |  |  | 冯一鸣; 郦哲聪; 刘乐威; 王飞钢; 周德阳 | 5h | 5h | 访谈录音 | 访谈记录 |
| 217 | 3.7.2 | 找杨老师(以项目下达者身份获取需求)访谈 | manual | 1d | 2018-10-18 17:00 A | 2018-10-18 18:00 A | 216 | 100% |  |  | 冯一鸣; 郦哲聪; 周德阳 | 3h | 3h | 访谈录音 | 访谈记录 |
| 218 | 3.7.3 | 找杨老师访谈（以教师用户身份获取需求） | manual | 1h | 2018-10-30 16:30 A | 2018-10-30 17:30 A | 217, 61 | 100% |  |  | 冯一鸣; 郦哲聪; 刘乐威; 王飞钢; 周德阳 | 5h | 5h | 访谈录音 | 访谈记录 |
| 219 | 3.7.4 | 找杨老师访谈（确认范围于需求） | manual | 1.5h | 2018-11-13 17:00 A | 2018-11-13 18:30 A | 218 | 100% |  |  | 冯一鸣; 郦哲聪; 刘乐威; 王飞钢; 周德阳 | 7.5h | 7.5h | 访谈录音 | 访谈记录 |
| 220 | 3.7.5 | 找杨老师访谈（确认范围于需求） | manual | 1h | 2018-12-06 20:00 A | 2018-12-06 21:00 A | 219 | 100% |  |  | 冯一鸣; 郦哲聪; 刘乐威; 王飞钢; 周德阳 | 5h | 5h | 访谈录音 | 访谈记录 |
| 221 | 3.7.6 | 学生用例确认 | manual | 2h | 2018-12-09 20:00 A | 2018-12-10 21:00 A | 63 | 100% |  |  | 冯一鸣; 郦哲聪; 刘乐威; 周德阳 | 17h | 17h | 访谈录音,获取学生初步需求 | 访谈记录,学生初步需求 |
| 222 | 3.7.7 | 管理员（课堂）确认 | manual | 1h | 2018-12-16 20:00 A | 2018-12-16 21:00 A | 63 | 100% |  |  | 冯一鸣; 郦哲聪; 刘乐威; 周德阳 | 4h | 4h | 访谈录音,获取管理员初步需求 | 访谈记录,管理员初步需求 |
| 223 | 3.7.8 | 教师确认(杨枨）第一次 | manual | 1h | 2018-12-17 20:00 A | 2018-12-17 21:00 A | 63 | 100% |  |  | 冯一鸣; 郦哲聪; 刘乐威; 周德阳 | 4h | 4h | 访谈录音,获取教师初步需求 | 访谈记录,教师初步需求 |
| 224 | 3.7.9 | 教师确认(杨枨）第二次-风格 | manual | 1h | 2018-12-19 14:00 A | 2018-12-19 15:00 A | 223 | 100% |  |  | 冯一鸣; 郦哲聪; 刘乐威; 周德阳 | 4h | 4h | 访谈录音,教师第二次获取需求 | 访谈记录,教师第二次需求获取 |
| 225 | 3.7.10 | 管理员（陈尚辉学长）二次确认 | manual | 1h | 2018-12-20 20:00 A | 2018-12-20 21:00 A | 222 | 100% |  |  | 冯一鸣; 郦哲聪; 刘乐威; 周德阳 | 4h | 4h | 访谈录音,管理员第二次获取需求 | 访谈记录,管理员第二次需求获取 |
| 226 | 3.7.11 | 指导者第四次确认&案例拥有者 | manual | 1h | 2018-12-26 20:00 A | 2018-12-26 21:00 A | 224 | 100% |  |  | 冯一鸣; 郦哲聪; 刘乐威; 周德阳 | 4h | 4h | 访谈录音,指导者第四次确认 | 访谈记录,指导者第四次确认 |
| 227 | 3.7.12 | 管理员（陈尚辉学长）最终确认 | manual | 1h | 2018-12-27 20:00 A | 2018-12-27 21:00 A | 225 | 100% |  |  | 冯一鸣; 郦哲聪; 刘乐威; 周德阳 | 4h | 4h | 访谈录音,管理员最终确认 | 访谈记录,管理员最终确认 |
| 228 | 3.7.13 | 举行并引导需求获取研讨会（JAD） | manual | 1h | 2019-01-03 14:00 A | 2019-01-03 15:00 A | 219, 227, 226, 225, 224, 223, 222, 221, 220 | 100% |  |  | 冯一鸣; 郦哲聪; 刘乐威; 王飞钢; 周德阳 | 5h | 5h | 会议录音,jad会议 | 会议记录,jad会议 |
| 229 | 4 | **项目控制** |  | 218d? | 2018-09-20 20:00 A | 2019-01-18 21:00 A |  | 100% |  |  |  | 357h | 357h |  |  |
| 230 | 4.1 | **小组会议** |  | 33h | 2018-09-20 20:00 A | 2018-10-08 21:00 |  | 100% |  | 2019-01-10 21:00 |  | 217h | 217h |  |  |
| 231 | 4.1.1 | 第一次小组会议 |  | 1h | 2018-09-20 20:00 A | 2018-09-20 21:00 A | 2 | 100% |  |  | 冯一鸣 [25%]; 郦哲聪 [25%]; 刘乐威 [25%]; 王飞钢 [25%]; 周德阳 [25%] | 5h | 5h | 第一次小组会议内容 | 第一次小组会议记录 |
| 232 | 4.1.2 | 第二次小组会议 | manual | 1d | 2018-09-27 20:00 A | 2018-09-27 21:00 A | 4 | 100% |  |  | 冯一鸣; 郦哲聪; 刘乐威; 王飞钢 | 4h | 4h | 第二次小组会议内容 | 第二次会议记录 |
| 233 | 4.1.3 | 第三次小组例会 | manual | 1h | 2018-09-20 20:00 A | 2018-09-20 21:00 A | 232 | 100% |  |  | 冯一鸣; 郦哲聪; 刘乐威; 王飞钢; 周德阳 | 5h | 5h | 第三次小组会议内容 | 第三次会议记录 |
| 234 | 4.1.4 | 第四次小组例会 | manual | 1h | 2018-10-05 20:00 A | 2018-10-05 21:00 A | 233 | 100% |  |  | 冯一鸣; 郦哲聪; 刘乐威; 周德阳 | 4h | 4h | 第四次小组会议内容 | 第四次会议记录 |
| 235 | 4.1.5 | 第五次小组例会 | manual | 1d | 2018-10-10 20:00 A | 2018-10-10 21:00 A | 234 | 100% |  |  | 冯一鸣; 郦哲聪; 刘乐威; 王飞钢; 周德阳 | 5h | 5h | 第五次小组会议内容 | 第五次会议记录 |
| 236 | 4.1.6 | 第六次小组例会 | manual | 1d | 2018-10-11 20:00 A | 2018-10-11 21:00 A | 235 | 100% |  |  | 冯一鸣; 郦哲聪; 刘乐威; 周德阳 | 4h | 4h | 第六次小组会议内容 | 第六次会议记录 |
| 237 | 4.1.7 | 第七次小组例会 | manual | 1h | 2018-10-17 20:00 A | 2018-10-17 21:00 A | 236 | 100% |  |  | 冯一鸣; 郦哲聪; 刘乐威; 王飞钢; 周德阳 | 5h | 5h | 第七次小组会议内容 | 第七次会议记录 |
| 238 | 4.1.8 | 第八次小组例会 | manual | 1h | 2018-10-18 20:00 A | 2018-10-18 21:00 A | 173FF | 100% |  |  | 冯一鸣; 郦哲聪; 王飞钢; 周德阳 | 4h | 4h | 第八次小组会议内容 | 第八次会议记录 |
| 239 | 4.1.9 | 第九次小组例会 | manual | 1h | 2018-10-25 20:00 A | 2018-10-25 21:00 A | 238 | 100% |  |  | 冯一鸣; 郦哲聪; 周德阳 | 3h | 3h | 第九次小组会议内容 | 第九次会议记录 |
| 240 | 4.1.10 | 第九次小组例会修改 | manual | 1h | 2018-11-03 11:00 A | 2018-11-03 12:00 A | 239 | 100% |  |  | 冯一鸣 | 1h | 1h | 第九次会议记录 | 第九次会议记录修改 |
| 241 | 4.1.11 | 小组学习会 | manual | 5h | 2018-11-02 08:00 A | 2018-11-02 13:00 A | 240 | 100% |  |  | 冯一鸣 [50%]; 郦哲聪 [50%]; 刘乐威 [50%]; 王飞钢 [50%]; 周德阳 [50%] | 12.5h | 12.5h | 小组学习会内容 | 小组学习会成果 |
| 242 | 4.1.12 | 第十次小组例会 | manual | 1h | 2018-10-31 21:30 A | 2018-10-31 22:30 A | 175FF | 100% |  |  | 冯一鸣; 郦哲聪; 刘乐威; 王飞钢; 周德阳 | 5h | 5h | 第十次小组会议内容 | 第十次会议记录 |
| 243 | 4.1.13 | 第十一次小组例会 | manual | 1h | 2018-11-08 20:00 A | 2018-11-08 21:00 A | 242 | 100% |  |  | 冯一鸣; 郦哲聪; 刘乐威; 王飞钢; 周德阳 | 5h | 5h | 第十一次小组会议内容 | 第十一次会议记录 |
| 244 | 4.1.14 | 小组学习会(1) | manual | 7h | 2018-11-10 08:00 A | 2018-11-10 15:00 A | 243 | 100% |  |  | 冯一鸣; 郦哲聪; 刘乐威; 王飞钢; 周德阳 | 35h | 35h | 小组学习会内容 | 小组学习会成果 |
| 245 | 4.1.15 | 第十二次小组例会 | manual | 1h | 2018-11-14 20:00 A | 2018-11-14 21:00 A | 244 | 100% |  |  | 冯一鸣; 郦哲聪; 刘乐威; 王飞钢; 周德阳 | 5h | 5h | 第十二次小组会议内容 | 第十二次会议记录 |
| 246 | 4.1.16 | 小组学习会(2) | manual | 7h | 2018-11-17 08:00 A | 2018-11-17 15:00 A | 245 | 100% |  |  | 冯一鸣 [50%]; 郦哲聪 [50%]; 刘乐威 [50%]; 王飞钢 [50%]; 周德阳 [50%] | 17.5h | 17.5h | 小组学习会内容 | 小组学习会成果 |
| 247 | 4.1.17 | 第十三次小组例会 | manual | 1h | 2018-11-21 20:00 A | 2018-11-21 21:00 A | 246 | 100% |  |  | 冯一鸣; 郦哲聪; 刘乐威; 王飞钢; 周德阳 | 5h | 5h | 第十三次小组会议内容 | 第十三次会议记录 |
| 248 | 4.1.18 | 第十四次小组例会 | manual | 1h | 2018-11-29 20:00 A | 2018-11-29 21:00 A | 247 | 100% |  |  | 冯一鸣; 郦哲聪; 刘乐威; 王飞钢; 周德阳 | 5h | 5h | 第十四次小组会议内容 | 第十四次会议记录 |
| 249 | 4.1.19 | 小组学习会(3) | manual | 4h | 2018-11-30 14:00 A | 2018-11-30 18:00 A | 248 | 100% |  |  | 冯一鸣; 郦哲聪; 刘乐威; 王飞钢; 周德阳 | 20h | 20h | 小组学习会内容 | 小组学习会成果 |
| 250 | 4.1.20 | 第十五次小组例会 | manual | 1h | 2018-12-05 20:00 A | 2018-12-05 21:00 A | 248 | 100% |  |  | 冯一鸣; 郦哲聪; 刘乐威; 王飞钢; 周德阳 | 5h | 5h | 第十五次小组会议内容 | 第十五次会议记录 |
| 251 | 4.1.21 | 第十六次小组例会(紧急） | manual | 1h | 2018-12-07 20:00 A | 2018-12-07 21:00 A | 250 | 100% |  |  | 冯一鸣; 郦哲聪; 刘乐威; 王飞钢; 周德阳 | 5h | 5h | 第十六次小组会议内容 | 第十六次会议记录 |
| 252 | 4.1.22 | 第十七次小组例会(紧急） | manual | 1h | 2018-12-10 20:00 A | 2018-12-10 21:00 A | 251 | 100% |  |  | 冯一鸣; 郦哲聪; 刘乐威; 王飞钢; 周德阳 | 5h | 5h | 第十七次小组会议内容 | 第十七次会议记录 |
| 253 | 4.1.23 | 第十八次小组例会 | manual | 1h | 2018-12-13 20:00 A | 2018-12-13 21:00 A | 252 | 100% |  |  | 冯一鸣; 郦哲聪; 刘乐威; 王飞钢; 周德阳 | 5h | 5h | 第十八次小组会议内容 | 第十八次会议记录 |
| 254 | 4.1.24 | 第十九次小组例会 | manual | 1h | 2018-12-20 20:00 A | 2018-12-20 21:00 A | 253 | 100% |  |  | 冯一鸣; 郦哲聪; 刘乐威; 王飞钢; 周德阳 | 5h | 5h | 第十九次小组会议内容 | 第十九次会议记录 |
| 255 | 4.1.25 | 第二十次小组例会(紧急） | manual | 1h | 2018-12-24 20:00 A | 2018-12-24 21:00 A | 254 | 100% |  |  | 冯一鸣; 郦哲聪; 刘乐威; 周德阳 | 4h | 4h | 第二十次小组会议内容 | 第二十次会议记录 |
| 256 | 4.1.26 | 第二十一次小组例会(紧急） | manual | 1h | 2019-01-02 20:00 A | 2019-01-02 21:00 A | 255 | 100% |  |  | 冯一鸣; 郦哲聪; 刘乐威; 王飞钢; 周德阳 | 5h | 5h | 第二十一次小组会议内容 | 第二十一次会议记录 |
| 257 | 4.1.27 | 第二十二次小组例会 | manual | 1h | 2019-01-03 20:00 A | 2019-01-03 21:00 A | 256 | 100% |  |  | 冯一鸣; 郦哲聪; 刘乐威; 王飞钢; 周德阳 | 5h | 5h | 第二十二次小组会议内容 | 第二十二次会议记录 |
| 258 | 4.1.28 | 第二十三次小组例会(紧急） | manual | 1h | 2019-01-04 14:00 A | 2019-01-04 15:00 A | 257 | 100% |  |  | 冯一鸣; 郦哲聪; 刘乐威; 王飞钢; 周德阳 | 5h | 5h | 第二十三次小组会议内容 | 第二十三次会议记录 |
| 259 | 4.1.29 | 第二十四次小组例会(紧急） | milestone, manual | 1h | 2019-01-09 21:00 A | 2019-01-10 21:00 A | 258 | 100% |  |  | 冯一鸣; 郦哲聪; 刘乐威; 王飞钢; 周德阳 | 23h | 23h | 第二十四次小组会议内容 | CCB会议记录,需求变更结果 |

Notes:
- 232: 周德阳由于ACM缺席

| ID | WBS | Task | Type | Duration | Start | Finish | Predecessors | Complete | Actual start | Actual finish | Resources | Work | Actual work | 输入 | 输出 |
| --- | --- | --- | --- | --- | --- | --- | --- | --- | --- | --- | --- | --- | --- | --- | --- |
| 260 | 4.2 | **小组团建** |  | 187d | 2018-10-07 17:00 A | 2019-01-18 21:00 A |  | 100% |  |  |  | 60h | 60h |  |  |
| 261 | 4.2.1 | 第一次team building | manual | 3d | 2018-10-07 17:00 A | 2018-10-07 20:00 A | 233, 234 | 100% |  |  | 冯一鸣; 郦哲聪; 刘乐威; 王飞钢; 周德阳 | 15h | 15h | 聚餐 | 团队建设初次团建 |
| 262 | 4.2.2 | 第二次team building | manual | 3h | 2018-12-19 04:00 A | 2018-12-19 07:00 A | 273 | 100% |  |  | 冯一鸣; 郦哲聪; 刘乐威; 王飞钢; 周德阳 | 15h | 15h | 聚会 | 熬夜过多，打气 |
| 263 | 4.2.3 | 第三次team building | manual | 3h | 2018-12-27 17:00 A | 2018-12-27 20:00 A | 273 | 100% |  |  | 冯一鸣; 郦哲聪; 刘乐威; 王飞钢; 周德阳 | 15h | 15h | 聚会 | 安慰PM电脑烧坏 |
| 264 | 4.2.4 | team building(评审结束后） | manual | 3h | 2019-01-18 18:00 A | 2019-01-18 21:00 A | 280 | 100% |  |  | 冯一鸣; 郦哲聪; 刘乐威; 王飞钢; 周德阳 | 15h | 15h | 聚会 | 散伙 |
| 265 | 4.3 | **小组评审** |  | 112h? | 2018-11-21 09:00 | 2019-01-09 10:00 |  | 100% | 2018-11-17 08:00 | 2019-01-14 20:00 |  | 80h | 80h |  |  |
| 266 | 4.3.1 | 需求工程计划评审-自查 | manual | 4h | 2018-11-17 08:00 A | 2018-11-17 10:00 | 35 | 100% |  | 2018-11-17 16:00 | 冯一鸣 [50%]; 郦哲聪 [50%]; 刘乐威 [50%]; 王飞钢 [50%]; 周德阳 [50%] | 10h | 10h | 项目计划相关文档及评审表 | 项目计划相关文档修改 |
| 267 | 4.3.2 | 需求工程计划评审 | manual | 2h | 2018-11-21 09:00 A | 2018-11-21 11:00 A | 266 | 100% |  |  | 冯一鸣; 郦哲聪; 刘乐威; 王飞钢; 周德阳 | 10h | 10h | 需求工程计划PPT&文档及评审表 | 评审修改意见 |
| 268 | 4.3.3 | 项目计划评审-修改 | manual | 2h | 2018-11-22 14:00 A | 2018-11-22 16:00 A | 267 | 100% |  |  | 郦哲聪 | 2h | 2h | 根据上课评审反馈做出修改 | 项目计划相关文档修改 |
| 269 | 4.3.4 | SRS组内评审 | manual | 3h | 2019-01-08 19:00 A | 2019-01-09 21:00 A | 147 | 100% |  |  | 冯一鸣; 郦哲聪; 刘乐威; 王飞钢; 周德阳 | 33h | 33h | SRS评审表及SRS相关文档 | 评审修改意见 |
| 270 | 4.3.5 | SRS评审 | manual | 2h | 2019-01-11 15:00 A | 2019-01-11 17:00 A | 269 | 100% |  |  | 冯一鸣; 郦哲聪; 刘乐威; 王飞钢; 周德阳 | 10h | 10h | SRS评审表及SRS相关文档 | 评审修改意见 |
| 271 | 4.3.6 | 需求工程项目收尾自评 | manual | 3h | 2019-01-14 17:00 A | 2019-01-14 20:00 A | 273, 274, 275, 276 | 100% |  |  | 冯一鸣; 郦哲聪; 刘乐威; 王飞钢; 周德阳 | 15h | 15h | 需求工程阶段文档 | 评审记录 |
| 272 | 5 | **项目收尾** |  | 25h? | 2019-01-10 08:00 | 2019-01-16 21:00 |  | 100% | 2019-01-14 14:00 | 2019-01-22 11:00 |  | 108h | 108h |  |  |
| 273 | 5.1 | 整理其他文档 | manual | 7h | 2019-01-14 15:00 A | 2019-01-15 21:00 A | 153, 155, 169 | 100% |  |  | 刘乐威 | 10h | 10h | 所有项目文档 | 最终文档集合 |
| 274 | 5.2 | 整理需求规格说明 | manual | 8h | 2019-01-14 14:00 A | 2019-01-15 21:00 A | 273 | 100% |  |  | 冯一鸣 | 8h | 8h | 整理需求规格说明相关文档 | 整理需求规格说明最终评审文档 |
| 275 | 5.3 | 整理愿景和范围文档 | manual | 7h | 2019-01-14 15:00 A | 2019-01-15 21:00 A | 273 | 100% |  |  | 王飞钢 | 10h | 10h | 整理愿景和范围文档 | 整理愿景和范围文档最终评审版 |
| 276 | 5.4 | 整理界面原型 | manual | 7h | 2019-01-14 15:00 A | 2019-01-15 21:00 A | 273 | 100% |  |  | 周德阳 | 7h | 7h | 整理界面原型 | 整理界面原型最终评审版 |
| 277 | 5.5 | 最终评审PPT制作 | manual | 8h | 2019-01-14 14:00 A | 2019-01-15 21:00 A | 273 | 100% |  |  | 郦哲聪 | 8h | 8h | 最终文档集合 | 最终评审PPT |
| 278 | 5.6 | 最终评审 | manual | 2h | 2019-01-16 12:00 A | 2019-01-16 14:00 A | 273, 274, 275, 276, 277, 262, 263, 271 | 100% |  |  | 冯一鸣; 郦哲聪; 刘乐威; 王飞钢; 周德阳 | 10h | 10h | 最终评审PPT | 最终评审 |
| 279 | 5.7 | 修改文档 | manual | 8h | 2019-01-17 17:00 A | 2019-01-19 17:00 A | 278 | 100% |  |  | 冯一鸣; 郦哲聪; 刘乐威; 王飞钢; 周德阳 | 54h | 54h | 最终评审修改意见 | 移交正式文档 |
| 280 | 5.8 | 移交正式文档 | milestone, manual | 1h | 2019-01-22 10:00 A | 2019-01-22 11:00 A | 279 | 100% |  |  | 郦哲聪 | 1h | 1h | 正式文档 | 移交正式文档 |
